# Cronograma Drinks

How a schedule from MS Project changed from version to version. A marks actual dates.

## Version 1 (saved 2016-06-16, file Cronograma-Drinks-Final-Copia.mpp)

Note of the change: Cronograma

| ID | WBS | Task | Duration | Start | Finish | Predecessors | Complete | Total float |
| --- | --- | --- | --- | --- | --- | --- | --- | --- |
| 1 | 1 | **Drinks** | 36d | 2016-05-11 09:00 A | 2016-06-29 18:00 |  | 63% |  |
| 2 | 1.1 | **Prospecção** | 8d | 2016-05-11 09:00 A | 2016-05-20 18:00 A |  | 100% |  |
| 3 | 1.1.1 | **PTEC** | 6d | 2016-05-11 09:00 A | 2016-05-18 18:00 |  | 100% |  |
| 4 |  | Estudar Domínio de Aplicação | 0.12d | 2016-05-11 09:00 A | 2016-05-11 15:00 A |  | 100% |  |
| 5 |  | Reunir-se com fornecedor de Requisitos | 0.12d | 2016-05-11 16:00 A | 2016-05-12 12:00 A | 4 | 100% |  |
| 6 |  | Redigir PTEC | 2.75d | 2016-05-12 17:00 A | 2016-05-16 12:00 A | 5 | 100% |  |
| 7 |  | Revisar Proposta Tecnica | 0.12d | 2016-05-18 16:00 A | 2016-05-18 17:00 A | 6 | 100% |  |
| 8 |  | Aprovar PTEC | 0d | 2016-05-18 17:00 A | 2016-05-18 17:00 A | 7 | 100% |  |
| 9 | 1.1.2 | **Estimativa Preliminar de Tamanho** | 1d | 2016-05-20 09:00 A | 2016-05-20 18:00 |  | 100% |  |
| 10 |  | Estimar Tamanho do Projeto | 0.12d | 2016-05-20 09:00 A | 2016-05-20 10:00 A | 8 | 100% |  |
| 11 |  | Revisar Estimativa de tamanho do Projeto | 0.12d | 2016-05-20 14:00 A | 2016-05-20 15:00 A | 10 | 100% |  |
| 12 | 1.1.3 | **Estimativa Preliminar de Cronograma e Orçamento** | 8d | 2016-05-11 09:00 | 2016-05-20 18:00 A |  | 100% |  |
| 13 |  | Elaborar Cronograma e Orçamento Preliminares | 0d | 2016-05-20 18:00 A | 2016-05-20 18:00 A | 9 | 100% |  |
| 14 |  | Revisar cronograma e Orçamento Preliminares | 0.12d | 2016-05-20 09:00 A | 2016-05-20 10:00 A | 13 | 100% |  |
| 15 | 1.2 | **Análise** | 6d | 2016-05-20 09:00 | 2016-05-27 18:00 |  | 100% |  |
| 16 | 1.2.1 | **Documento de Requisitos** | 4d | 2016-05-20 09:00 | 2016-05-25 18:00 |  | 100% |  |
| 17 |  | Reunir-se com o Cliente | 1.12d | 2016-05-20 14:00 A | 2016-05-23 15:00 A |  | 100% |  |
| 18 |  | Elaborar DRE | 1.12d | 2016-05-24 17:00 A | 2016-05-25 08:00 A | 17 | 100% |  |
| 19 |  | Revisar DRE | 0.25d | 2016-05-25 13:00 A | 2016-05-25 15:00 A | 18 | 100% |  |
| 20 |  | Submeter DRE para aprovação do Cliente | 0d | 2016-05-25 15:00 A | 2016-05-25 15:00 A | 19 | 100% |  |
| 21 | 1.2.2 | **Matriz de Rastreabilidade** | 3.25d | 2016-05-26 09:00 A | 2016-05-31 11:00 A |  | 100% |  |
| 22 |  | Analisar DRE | 0.25d | 2016-05-26 09:00 A | 2016-05-26 16:00 A | 16 | 100% |  |
| 23 |  | Desenvolver Matriz de Rastreabilidade | 0.92d | 2016-05-26 16:00 A | 2016-05-30 10:23 A | 22 | 100% |  |
| 24 |  | Revisar Matriz de Rastreabilidade | 0.12d | 2016-05-30 18:00 | 2016-05-31 11:00 A | 23 | 100% |  |
| 25 | 1.3 | **Projeto** | 6.62d | 2016-05-31 13:00 A | 2016-06-08 18:00 A |  | 100% |  |
| 26 | 1.3.1 | **Diagrama de Classes** | 6.62d | 2016-05-31 13:00 A | 2016-06-08 18:00 A |  | 100% |  |
| 27 |  | Elaborar Diagrama de Classes | 4.25d | 2016-05-31 13:00 A | 2016-06-04 15:00 A | 24 | 100% |  |
| 28 |  | Revisar Diagrama de Classes | 0.25d | 2016-06-08 08:00 A | 2016-06-08 10:00 A | 27 | 100% |  |
| 29 |  | Atualizar MRB | 0d | 2016-06-08 18:00 A | 2016-06-08 18:00 A | 27 | 100% |  |
| 30 | 1.4 | **Modelo Entidade de Relacionamento** | 2d | 2016-06-09 07:00 A | 2016-06-11 10:00 A |  | 100% |  |
| 31 |  | Elaborar MER | 0.38d | 2016-06-09 07:00 A | 2016-06-09 10:00 A | 26 | 100% |  |
| 32 |  | Revisar MER | 1.75d | 2016-06-09 13:00 A | 2016-06-11 10:00 A | 31 | 100% |  |
| 33 | 1.5 | **Implementação** | 31.56d | 2016-05-11 09:00 A | 2016-06-23 14:30 |  | 39% | 0d |
| 34 | 1.5.1 | **Implementação 01** | 3d | 2016-06-10 13:00 A | 2016-06-15 12:00 A |  | 100% |  |
| 35 | 1.5.1.1 | **Implementação RFC01** | 1.75d | 2016-06-10 13:00 A | 2016-06-14 10:00 A |  | 100% |  |
| 36 |  | Implementar RFS01 | 0.5d | 2016-06-10 13:00 A | 2016-06-10 17:00 A | 32 | 100% |  |
| 37 |  | Implementar RFS02 | 0.62d | 2016-06-10 17:00 A | 2016-06-11 14:00 A | 36 | 100% |  |
| 38 |  | Implementar RFS03 | 0.5d | 2016-06-13 13:00 A | 2016-06-13 17:00 A | 37 | 100% |  |
| 39 |  | Implementar RFS04 | 0.25d | 2016-06-13 17:00 A | 2016-06-14 10:00 A | 38 | 100% |  |
| 40 | 1.5.1.2 | **Implementação RFC05** | 2.62d | 2016-06-10 13:00 | 2016-06-14 18:00 |  | 100% |  |
| 41 |  | Implementar RFS013 | 0.25d | 2016-06-11 10:00 A | 2016-06-11 16:00 A | 32 | 100% |  |
| 42 | 1.5.1.3 | **Teste** | 2.25d | 2016-06-13 10:00 A | 2016-06-15 12:00 A |  | 100% |  |
| 43 |  | Teste RFC01 | 0.88d | 2016-06-14 14:00 A | 2016-06-15 12:00 A | 39 | 100% |  |
| 44 |  | Teste RFC05 | 0.88d | 2016-06-13 10:00 A | 2016-06-14 09:00 A | 41 | 100% |  |
| 45 | 1.5.2 | **Implementação 02** | 2.38d | 2016-06-11 10:00 A | 2016-06-15 12:00 A |  | 100% |  |
| 46 | 1.5.2.1 | **Implementação RFC06** | 0d | 2016-06-11 10:00 A | 2016-06-11 18:00 A |  | 100% |  |
| 47 |  | Implementar RFS014 | 0.88d | 2016-06-11 10:00 A | 2016-06-11 18:00 A | 32 | 100% |  |
| 48 | 1.5.2.2 | **Implementação RFC08** | 1d | 2016-06-13 13:00 A | 2016-06-14 12:00 A |  | 100% |  |
| 49 |  | Implementar RFS018 | 0.62d | 2016-06-13 13:00 A | 2016-06-14 12:00 A | 32 | 100% |  |
| 50 | 1.5.2.3 | **Teste** | 1.88d | 2016-06-13 14:00 A | 2016-06-15 12:00 A |  | 100% |  |
| 51 |  | Teste RFC06 | 0.88d | 2016-06-13 14:00 A | 2016-06-14 12:00 A | 47 | 100% |  |
| 52 |  | Teste RFC08 | 1d | 2016-06-14 13:00 A | 2016-06-15 12:00 A | 49 | 100% |  |
| 53 | 1.5.3 | **Implementação 03** | 3.75d | 2016-06-13 14:00 | 2016-06-17 11:00 |  |  | 0d |
| 54 | 1.5.3.1 | **Implementação RFC04** | 1d | 2016-06-16 09:00 | 2016-06-16 18:00 |  |  | 0d |
| 55 |  | Implementar RFS12 | 1d | 2016-06-16 09:00 | 2016-06-16 18:00 | 67 |  |  |
| 56 | 1.5.3.2 | **Implementação RFC09** | 0.62d | 2016-06-13 14:00 | 2016-06-14 10:00 |  |  | 0d |
| 57 |  | Implementar RFS19 | 0.62d | 2016-06-13 14:00 | 2016-06-14 10:00 | 67 |  |  |
| 58 |  | Implementar RFS20 | 0.62d | 2016-06-13 14:00 | 2016-06-14 10:00 | 67 |  |  |
| 59 | 1.5.3.3 | **Teste** | 2.88d | 2016-06-14 13:00 | 2016-06-17 11:00 |  |  | 0d |
| 60 |  | Teste RFC04 | 0.25d | 2016-06-17 09:00 | 2016-06-17 11:00 | 55 |  |  |
| 61 |  | Teste RFC09 | 0.25d | 2016-06-14 13:00 | 2016-06-14 17:00 | 58 |  |  |
| 62 | 1.5.4 | **Implementação 04** | 28d | 2016-05-13 09:00 | 2016-06-21 18:00 |  |  | 0d |
| 63 | 1.5.4.1 | **Implementação RFC02** | 25d | 2016-05-13 09:00 | 2016-06-16 18:00 |  |  |  |
| 64 |  | Implementar RFS05 | 0d | 2016-06-15 13:00 | 2016-06-15 13:00 | 52 |  |  |
| 65 |  | Implementar RFS06 | 1.62d | 2016-06-11 10:00 | 2016-06-13 06:00 | 32 |  |  |
| 66 |  | Implementar RFS07 | 1d | 2016-06-13 08:00 | 2016-06-13 17:00 | 32 |  |  |
| 67 |  | Implementar RFS08 | 0.88d | 2016-06-11 10:00 | 2016-06-11 18:00 | 32 |  |  |
| 68 | 1.5.4.2 | **Implementação RFC03** | 1.5d | 2016-06-14 17:00 | 2016-06-16 12:00 |  |  | 0d |
| 69 |  | Implementar RFS09 | 0.5d | 2016-06-14 17:00 | 2016-06-15 12:00 | 61 |  |  |
| 70 |  | Implementar RFS10 | 0.5d | 2016-06-15 14:00 | 2016-06-15 18:00 | 69 |  |  |

| ID | WBS | Task | Duration | Start | Finish | Predecessors | Complete | Total float |
| --- | --- | --- | --- | --- | --- | --- | --- | --- |
| 71 |  | Implementar RFS11 | 0.62d | 2016-06-16 08:00 | 2016-06-16 14:00 | 70 |  |  |
| 72 | 1.5.4.3 | **Implementação RFC07** | 2.75d | 2016-06-14 17:00 | 2016-06-17 15:00 |  |  | 0d |
| 73 |  | Implementar RFS15 | 0.62d | 2016-06-14 17:00 | 2016-06-15 17:00 | 61 |  |  |
| 74 |  | Implementar RFS16 | 0.62d | 2016-06-15 16:00 | 2016-06-16 16:00 | 73 |  |  |
| 75 |  | Implementar RFS17 | 0.5d | 2016-06-16 16:00 | 2016-06-17 15:00 | 74 |  |  |
| 76 | 1.5.4.4 | **Teste** | 6.5d | 2016-06-13 14:00 | 2016-06-21 18:00 |  |  | 0d |
| 77 |  | Teste RFC02 | 1.5d | 2016-06-13 14:00 | 2016-06-14 18:00 | 67 |  |  |
| 78 |  | Teste RFC03 | 0.25d | 2016-06-21 09:00 | 2016-06-21 15:00 | 71 |  |  |
| 79 |  | TesteRFC07 | 0.62d | 2016-06-21 09:00 | 2016-06-21 18:00 | 75 |  |  |
| 80 | 1.5.5 | **Monitoramento e Controle** | 1d | 2016-05-11 09:00 A | 2016-05-11 18:00 |  | 50% | 0d |
| 81 |  | Acompanhar Projeto | 1d | 2016-05-11 09:00 A | 2016-05-11 18:00 |  | 50% |  |
| 82 | 1.5.6 | **Gerência de Configuração** | 1.56d | 2016-06-22 09:00 A | 2016-06-23 14:30 |  | 50% | 0d |
| 83 |  | Elaborar Branch | 0.56d | 2016-06-22 09:00 A | 2016-06-22 14:30 | 32 | 50% |  |
| 84 |  | Realizar Merge da Branch X para a Trunk | 0.56d | 2016-06-23 09:00 A | 2016-06-23 14:30 | 32 | 50% |  |

## Version 2 (saved 2016-06-20, file Cronograma Drinks - Final - Copia.mpp)

Note of the change: Merge a599d10decc02a95b3b302476ba10942a3a79dbb into 700aacbaeff43a9cf7dab5ca87e1d0d077d2d3ff

Last finish stays 2016-06-29. Complete tasks 32 → 37.

Changed:

| ID | Task | Start | Finish | Complete | Total float |
| --- | --- | --- | --- | --- | --- |
| 1 | **Drinks** |  |  | 63% → 72% |  |
| 33 | **Implementação** |  |  | 39% → 54% |  |
| 53 | **Implementação 03** | 2016-06-13 14:00 A | 2016-06-17 11:00 A | 0% → 100% | 0d → none |
| 54 | **Implementação RFC04** | 2016-06-16 09:00 A | 2016-06-16 18:00 A | 0% → 100% | 0d → none |
| 55 | Implementar RFS12 | 2016-06-16 09:00 A | 2016-06-16 18:00 A | 0% → 100% |  |
| 56 | **Implementação RFC09** | 2016-06-13 14:00 A | 2016-06-14 10:00 A | 0% → 100% | 0d → none |
| 57 | Implementar RFS19 | 2016-06-13 14:00 A | 2016-06-14 10:00 A | 0% → 100% |  |
| 58 | Implementar RFS20 | 2016-06-13 14:00 A | 2016-06-14 10:00 A | 0% → 100% |  |
| 59 | **Teste** | 2016-06-14 13:00 A | 2016-06-17 11:00 A | 0% → 100% | 0d → none |
| 60 | Teste RFC04 | 2016-06-17 09:00 A | 2016-06-17 11:00 A | 0% → 100% |  |
| 61 | Teste RFC09 | 2016-06-14 13:00 A | 2016-06-14 17:00 A | 0% → 100% |  |
| 80 | **Monitoramento e Controle** |  |  | 50% → 75% |  |
| 81 | Acompanhar Projeto |  |  | 50% → 75% |  |
| 82 | **Gerência de Configuração** |  |  | 50% → 75% |  |
| 83 | Elaborar Branch |  |  | 50% → 75% |  |
| 84 | Realizar Merge da Branch X para a Trunk |  |  | 50% → 75% |  |
